# BS_AT02_Raspored_Aktivnosti

How a schedule from MS Project changed from version to version. A marks actual dates.

## Version 1 (saved 2024-11-05)

| ID | WBS | Task | Duration | Start | Finish | Predecessors | Total float | Constraint |
| --- | --- | --- | --- | --- | --- | --- | --- | --- |
| 1 | 1 | **Očekivani rezultati** | 78d | 2024-10-30 | 2025-02-06 |  | 0d |  |
| 2 |  | Početak projekta | 0d | 2024-10-30 | 2024-10-30 | 16SS | 78d | start no earlier than 2024-10-24 |
| 3 |  | Vizija sistema | 0d | 2024-11-07 | 2024-11-07 | 19 | 71d |  |
| 4 |  | Dokument o zahtevima | 0d | 2024-11-14 | 2024-11-14 | 25 | 64d | start no earlier than 2024-11-13 |
| 5 |  | Arhitekturni prototip | 0d | 2024-11-27 | 2024-11-27 | 26 | 54d | start no earlier than 2024-11-16 |
| 6 |  | Prototipi korisničkog interfejsa | 0d | 2024-12-03 | 2024-12-03 | 28 | 48d | start no earlier than 2024-11-20 |
| 7 |  | Arhitekturni projekat | 0d | 2024-11-27 | 2024-11-27 |  | 55d | start no earlier than 2024-11-27 |
| 8 |  | Detaljni projekat | 0d | 2024-12-19 | 2024-12-19 | 32 | 34d | start no earlier than 2024-12-11 |
| 9 |  | Beta verzija | 0d | 2024-12-24 | 2024-12-24 | 33 | 31d | start no earlier than 2024-12-14 |
| 10 |  | Plan testiranja | 0d | 2024-12-30 | 2024-12-30 | 34 | 27d | start no earlier than 2024-12-18 |
| 11 |  | Izveštaj o testiranju | 0d | 2025-01-01 | 2025-01-01 | 35 | 25d | start no earlier than 2024-12-25 |
| 12 |  | Konačna verzija | 0d | 2025-01-08 | 2025-01-08 | 37, 39 | 20d | start no earlier than 2024-12-30 |
| 13 |  | Korisničko iskustvo | 0d | 2025-01-23 | 2025-01-23 | 48, 45 | 9d | start no earlier than 2025-01-07 |
| 14 |  | Prezentacija proizvoda | 0d | 2025-02-06 | 2025-02-06 | 43 | 0d | start no earlier than 2025-02-06 |
| 16 | 2 | **Faza planiranja projekta** | 12d? | 2024-10-30 | 2024-11-12 |  | 7d |  |
| 17 | 2.1 | **Preliminarna iteracija** | 12d? | 2024-10-30 | 2024-11-12 |  | 7d |  |
| 18 |  | Definisanje zahteva | 3d? | 2024-10-30 | 2024-11-01 |  | 7d |  |
| 19 |  | Izrada vizije sistema | 4d? | 2024-11-04 | 2024-11-07 | 18 | 7d | finish no earlier than 2024-11-01 |
| 20 |  | Modelovanje domena | 0d | 2024-11-07 | 2024-11-07 | 19 | 7d | finish no earlier than 2024-11-04 |
| 21 |  | Analiza slučajeva korišćenja | 5d? | 2024-11-08 | 2024-11-12 | 20 | 7d | finish no earlier than 2024-11-11 |
| 23 | 3 | **Faza razrade projekta** | 18d? | 2024-11-13 | 2024-12-03 | 16 | 7d |  |
| 24 | 3.1 | **Iteracija R1 - Razvoj arhitekturnog prototipa** | 18d? | 2024-11-13 | 2024-12-03 | 17 | 7d |  |
| 25 |  | Izrada dokumenta o zahtevima | 2d? | 2024-11-13 | 2024-11-14 |  | 7d | start no earlier than 2024-11-13 |
| 26 |  | Implementacija arhitekturnog prototipa | 10d? | 2024-11-15 | 2024-11-27 | 25 | 7d | finish no earlier than 2024-11-19 |
| 27 |  | Testiranje arhitekture | 3d? | 2024-11-28 | 2024-11-30 | 26 | 7d | start no earlier than 2024-11-19 |
| 28 |  | Implementacija protoipa korisničkog interfejsa | 3d? | 2024-12-01 | 2024-12-03 | 27 | 7d | finish no earlier than 2024-11-29 |
| 30 | 4 | **Faza izrade projekta** | 28d? | 2024-12-04 | 2025-01-08 | 23 | 7d |  |
| 31 | 4.1 | **Iteracija I1 - Razvoj beta faze** | 23d | 2024-12-04 | 2025-01-01 |  | 7d |  |
| 32 |  | Izrada detaljnog projekta | 14d | 2024-12-04 | 2024-12-19 |  | 34d | finish no earlier than 2024-12-15 |
| 33 |  | Implementacija beta verzije | 17d | 2024-12-04 | 2024-12-24 |  | 7d | finish no earlier than 2024-12-18 |
| 34 |  | Izrada plana testiranja | 4d | 2024-12-25 | 2024-12-30 | 33 | 7d | finish no earlier than 2024-12-24 |
| 35 |  | Testiranje sistema | 2d | 2024-12-31 | 2025-01-01 | 34 | 20d | start no earlier than 2024-12-25 |
| 36 |  | Izjava izvestaja o testiranju | 2d | 2024-12-31 | 2025-01-01 | 34 | 7d | finish no earlier than 2024-12-26 |
| 37 | 4.2 | **Iteracije I2 - Razvoj konačne verzije** | 5d? | 2025-01-02 | 2025-01-08 | 35 | 20d |  |
| 38 |  | Implementacija konačne verzije | 4d | 2025-01-02 | 2025-01-07 |  | 20d | start no earlier than 2024-12-27 |
| 39 |  | Testiranje konačne verzije | 1d? | 2025-01-08 | 2025-01-08 | 38 | 20d |  |
| 40 |  | Ažuriranje izveštaja o testiranju | 1d? | 2025-01-08 | 2025-01-08 | 38 | 20d | start no earlier than 2025-01-02 |
| 42 | 5 | **Faza okončanja projekta** | 18d? | 2025-01-09 | 2025-02-03 | 36 | 2d |  |
| 43 | 5.1 | **Iteracija O1 - Instalacija sistema** | 18d? | 2025-01-09 | 2025-02-03 |  | 2d |  |
| 44 |  | Sređivanje projektne dokumentacije | 7d | 2025-01-09 | 2025-01-17 |  | 6d | start no earlier than 2025-01-09 |
| 45 |  | Izrada korisničkog uputstva | 6d | 2025-01-20 | 2025-01-27 | 44 | 6d |  |
| 46 |  | Instalacija sistema | 1d? | 2025-01-28 | 2025-01-28 | 45 | 6d |  |
| 47 |  | Sređivanje projektne dokumentacije | 8d | 2025-01-09 | 2025-01-20 |  | 2d | start no earlier than 2025-01-09 |
| 48 |  | Izrada korisničkog uputstva | 3d | 2025-01-21 | 2025-01-23 | 47 | 2d |  |
| 49 |  | Instalacija sistema | 7d | 2025-01-24 | 2025-02-03 | 48 | 2d | start no earlier than 2025-01-24 |

## Version 2 (saved 2024-11-07)

Last finish 2025-02-06 → 2025-01-30 (-7d).

Added:

| ID | Task | Duration | Start | Finish | Predecessors | Constraint | Resources |
| --- | --- | --- | --- | --- | --- | --- | --- |
| 29 | Izrada arhitekturnog projekta | 1d | 2024-11-27 | 2024-11-27 | 28 | finish no earlier than 2024-11-27 | Ajša Tahirović |
| 32 | **Iteracija I1 - Razvoj beta verzije** | 21d | 2024-11-29 | 2024-12-20 |  |  | Ajša Tahirović |
| 38 | **Iteracija I2 - Razvoj konačne verzije** | 4d | 2024-12-26 | 2024-12-30 | 32 |  | Ajša Tahirović |

Removed: 31 Iteracija I1 - Razvoj beta faze; 36 Izjava izvestaja o testiranju; 47 Sređivanje projektne dokumentacije; 48 Izrada korisničkog uputstva; 49 Instalacija sistema

Changed:

| ID | Task | Start | Finish | Duration | Total float | Predecessors | Other |
| --- | --- | --- | --- | --- | --- | --- | --- |
| 1 | **Očekivani rezultati** | 2024-10-30 → 2024-10-24 (-6d) | 2025-02-06 → 2025-01-30 (-7d) | 78d → 83d |  |  |  |
| 2 | Početak projekta | 2024-10-30 → 2024-10-24 (-6d) | 2024-10-30 → 2024-10-24 (-6d) |  | 78d → 77d |  | constraint start no earlier than 2024-10-24 → none |
| 3 | Vizija sistema | 2024-11-07 → 2024-10-30 (-8d) | 2024-11-07 → 2024-10-30 (-8d) |  | 71d → 77d |  | constraint none → start no earlier than 2024-10-30 |
| 4 | Dokument o zahtevima | 2024-11-14 → 2024-11-13 (-1d) | 2024-11-14 → 2024-11-13 (-1d) |  | 64d → 66d |  | resources Aldina Avdić [50%] → Ajša Tahirović |
| 5 | Arhitekturni prototip | 2024-11-27 → 2024-11-18 (-9d) | 2024-11-27 → 2024-11-18 (-9d) |  | 54d → 62d |  |  |
| 6 | Prototip korisničkog interfejsa | 2024-12-03 → 2024-11-20 (-13d) | 2024-12-03 → 2024-11-20 (-13d) |  | 48d → 60d |  | was named Prototipi korisničkog interfejsa |
| 7 | Arhitekturni projekat |  |  |  | 55d → 49d | none → 29 | resources Ajša Tahirović → Aldina Avdić |
| 8 | Detaljni projekat | 2024-12-19 → 2024-12-14 (-5d) | 2024-12-19 → 2024-12-14 (-5d) |  | 34d → 40d |  | constraint start no earlier than 2024-12-11 → start no earlier than 2024-12-14; resources Aldina Avdić → Ajša Tahirović |
| 9 | Beta verzija | 2024-12-24 → 2024-12-18 (-6d) | 2024-12-24 → 2024-12-18 (-6d) |  | 31d → 36d |  | constraint start no earlier than 2024-12-14 → start no earlier than 2024-12-18 |
| 10 | Plan testiranja | 2024-12-30 → 2024-12-25 (-5d) | 2024-12-30 → 2024-12-25 (-5d) |  | 27d → 31d |  | constraint start no earlier than 2024-12-18 → start no earlier than 2024-12-25 |
| 11 | Izveštaj o testiranju | 2025-01-01 → 2024-12-30 (-2d) | 2025-01-01 → 2024-12-30 (-2d) |  | 25d → 26d | 36 → 41 |  |
| 12 | Konačna verzija | 2025-01-08 → 2024-12-30 (-9d) | 2025-01-08 → 2024-12-30 (-9d) |  | 20d → 26d | 37, 40 → 38 | constraint start no earlier than 2024-12-30 → none |
| 13 | Korisničko uputstvo | 2025-01-23 → 2025-01-15 (-8d) | 2025-01-23 → 2025-01-15 (-8d) |  | 9d → 11d | Izrada korisničkog uputstva, 46 → 46 | was named Korisničko iskustvo; constraint start no earlier than 2025-01-07 → start no earlier than 2025-01-04 |
| 14 | Prezentacija proizvoda | 2025-02-06 → 2025-01-30 (-7d) | 2025-02-06 → 2025-01-30 (-7d) |  |  |  | constraint start no earlier than 2025-02-06 → start no earlier than 2025-01-09 |
| 16 | **Faza planiranja projekta** | 2024-10-30 → 2024-10-24 (-6d) | 2024-11-12 → 2024-11-07 (-5d) | 12d? → 12d | 7d → 12d |  | resources none → Aldina Avdić |
| 17 | **Nejla Tobdžiu** | 2024-10-30 → 2024-10-24 (-6d) | 2024-11-12 → 2024-11-07 (-5d) | 12d? → 12d | 7d → 12d |  | was named Preliminarna iteracija; resources none → Ajša Tahirović |
| 18 | Definisanje zahteva | 2024-10-30 → 2024-10-24 (-6d) | 2024-11-01 → 2024-10-26 (-6d) | 3d? → 3d | 7d → 12d |  | constraint none → start no earlier than 2024-10-24; resources Aldina Avdić → Ajša Tahirović |
| 19 | Izrada vizije sistema | 2024-11-04 → 2024-10-28 (-7d) | 2024-11-07 → 2024-10-30 (-8d) | 4d? → 3d | 7d → 12d |  | constraint finish no earlier than 2024-11-01 → finish no earlier than 2024-10-30; resources Aldina Avdić → Ajša Tahirović |
| 20 | Modelovanje domena | 2024-11-07 → 2024-10-31 (-7d) | 2024-11-07 → 2024-11-01 (-6d) | 0d → 2d | 7d → 12d |  | constraint finish no earlier than 2024-11-04 → start no earlier than 2024-10-31 |
| 21 | Analiza slučajeva korišćenja | 2024-11-08 → 2024-11-04 (-4d) | 2024-11-12 → 2024-11-07 (-5d) | 5d? → 4d | 7d → 12d |  | constraint finish no earlier than 2024-11-11 → finish no earlier than 2024-11-06 |
| 23 | **Faza razrade projekta** | 2024-11-13 → 2024-11-08 (-5d) | 2024-12-03 → 2024-11-27 (-6d) | 18d? → 16d | 7d → 8d |  | resources none → Ajša Tahirović |
| 24 | **Iteracija R1 - Razvoj arhitekturnog prototipa** | 2024-11-13 → 2024-11-08 (-5d) | 2024-12-03 → 2024-11-27 (-6d) | 18d? → 16d | 7d → 8d | 17 → none | resources none → Ajša Tahirović |
| 25 | Izrada dokumenta o zahtevima | 2024-11-13 → 2024-11-08 (-5d) | 2024-11-14 → 2024-11-13 (-1d) | 2d? → 5d | 7d → 19d |  | constraint start no earlier than 2024-11-13 → finish no earlier than 2024-11-13; resources Aldina Avdić → Ajša Tahirović |
| 26 | Implementacija arhitekturnog prototipa | 2024-11-15 → 2024-11-08 (-7d) | 2024-11-27 → 2024-11-18 (-9d) | 10d? → 9d | 7d → 12d | 25 → none | constraint finish no earlier than 2024-11-19 → finish no earlier than 2024-11-16 |
| 27 | Testiranje arhitekture | 2024-11-28 → 2024-11-19 (-9d) | 2024-11-30 → 2024-11-19 (-11d) | 3d? → 1d | 7d → 12d |  | constraint start no earlier than 2024-11-19 → start no earlier than 2024-11-17 |
| 28 | Implementacija prototipa korisničkog interfejsa | 2024-12-01 → 2024-11-20 (-11d) | 2024-12-03 → 2024-11-20 (-13d) | 3d? → 1d | 7d → 12d |  | was named Implementacija protoipa korisničkog interfejsa; constraint finish no earlier than 2024-11-29 → finish no earlier than 2024-11-20 |
| 31 | **Faza izrade projekta** | 2024-12-04 → 2024-11-29 (-5d) | 2025-01-08 → 2024-12-30 (-9d) | 28d? → 28d | 7d → 0d |  | resources none → Ajša Tahirović |
| 33 | Izrada detaljnog projekta | 2024-12-04 → 2024-11-29 (-5d) | 2024-12-19 → 2024-12-11 (-8d) | 14d → 12d | 34d → 12d |  | constraint finish no earlier than 2024-12-15 → finish no earlier than 2024-12-11 |
| 34 | Implementacija beta verzije | 2024-12-04 → 2024-11-29 (-5d) | 2024-12-24 → 2024-12-14 (-10d) | 17d → 15d |  |  | constraint finish no earlier than 2024-12-18 → finish no earlier than 2024-12-14; resources Aldina Avdić → Ajša Tahirović |
| 35 | Izrada plana testiranja | 2024-12-25 → 2024-12-18 (-7d) | 2024-12-30 → 2024-12-18 (-12d) | 4d → 0d | 7d → 3d |  | constraint finish no earlier than 2024-12-24 → finish no earlier than 2024-12-18 |
| 36 | Testiranje sistema | 2024-12-31 → 2024-12-20 (-11d) | 2025-01-01 → 2024-12-20 (-12d) | 2d → 0d | 20d → 3d |  | constraint start no earlier than 2024-12-25 → finish no earlier than 2024-12-20 |
| 37 | Izrada izveštaja o testiranju | 2025-01-02 → 2024-12-19 (-14d) | 2025-01-08 → 2024-12-20 (-19d) | 5d? → 2d | 20d → 3d | 36 → 35 | was named Iteracije I2 - Razvoj konačne verzije; constraint none → finish no earlier than 2024-12-20; resources none → Ajša Tahirović |
| 39 | Implementacija konačne verzije | 2025-01-02 → 2024-12-26 (-7d) | 2025-01-07 → 2024-12-29 (-9d) | 4d → 3d | 20d → 0d |  | constraint start no earlier than 2024-12-27 → finish no earlier than 2024-12-29 |
| 40 | Testiranje konačne verzije | 2025-01-08 → 2024-12-30 (-9d) | 2025-01-08 → 2024-12-30 (-9d) | 1d? → 1d | 20d → 0d |  |  |
| 41 | Ažuriranje izveštaja o testiranju | 2025-01-08 → 2024-12-30 (-9d) | 2025-01-08 → 2024-12-30 (-9d) | 1d? → 1d | 20d → 0d |  | constraint start no earlier than 2025-01-02 → start no earlier than 2024-12-30 |
| 43 | **Faza okončanja projekta** | 2025-01-09 → 2024-12-31 (-9d) | 2025-02-03 → 2025-01-30 (-4d) | 18d? → 26d | 2d → 0d | Izjava izvestaja o testiranju → 38 | resources none → Ajša Tahirović |
| 44 | **Iteracija O1 - Instalacija sistema** | 2025-01-09 → 2024-12-31 (-9d) | 2025-02-03 → 2025-01-30 (-4d) | 18d? → 26d | 2d → 0d |  | resources none → Ajša Tahirović |
| 45 | Sređivanje projektne dokumentacije | 2025-01-09 → 2024-12-31 (-9d) | 2025-01-17 → 2025-01-09 (-8d) | 7d → 10d | 6d → 0d |  | constraint start no earlier than 2025-01-09 → finish no earlier than 2024-12-29; resources Aldina Avdić → Ajša Tahirović |
| 46 | Izrada korisničkog uputstva | 2025-01-20 → 2025-01-10 (-10d) | 2025-01-27 → 2025-01-15 (-12d) | 6d → 5d | 6d → 0d |  | constraint none → finish no earlier than 2025-01-06 |
| 47 | Instalacija sistema | 2025-01-28 → 2025-01-16 (-12d) | 2025-01-28 → 2025-01-30 (+2d) | 1d? → 11d | 6d → 0d |  | constraint none → finish no earlier than 2025-01-22 |
